| id | wbs | name | duration | workstream | baselineStart | baselineFinish | totalSlackDays | critical | predecessors | relationships |
| --- | --- | --- | --- | --- | --- | --- | --- | --- | --- | --- |
| PREL-010 | 1.1 | Notice to Proceed | 0 | Preliminaries | 2026-09-01 | 2026-09-01 | 0 | True |  |  |
| PREL-020 | 1.2 | Mobilization & Temporary Facilities | 20 | Preliminaries | 2026-09-01 | 2026-09-23 | 0 | True | PREL-010 | FS |
| PREL-030 | 1.3 | Survey / Setting Out | 15 | Preliminaries | 2026-09-07 | 2026-09-23 | 0 | True | PREL-020 | SS+5d |
| DES-010 | 2.1 | Review IFC Drawings / Interfaces | 30 | Design & Procurement | 2026-09-01 | 2026-10-05 | 64 |  | PREL-010 | FS |
| DES-020 | 2.2 | Method Statements & Material Submittals | 45 | Design & Procurement | 2026-09-12 | 2026-11-03 | 64 |  | DES-010 | SS+10d |
| PROC-010 | 2.3 | Long-Lead M&E Procurement | 300 | Design & Procurement | 2026-11-04 | 2027-10-19 | 64 |  | DES-020 | FS |
| PROC-020 | 2.4 | SCADA / Instrumentation Procurement | 260 | Design & Procurement | 2026-11-04 | 2027-09-02 | 204 |  | DES-020 | FS |
| PROC-030 | 2.5 | Electrical / Receiving Equipment Procurement | 240 | Design & Procurement | 2026-11-04 | 2027-08-10 | 124 |  | DES-020 | FS |
| WTP-CIV-010 | 3.1 | Site Clearing / Excavation / Dewatering | 35 | Chinaimo WTP | 2026-09-24 | 2026-11-03 | 0 | True | PREL-030 | FS |
| WTP-CIV-020 | 3.2 | Ground Preparation / Blinding | 15 | Chinaimo WTP | 2026-11-04 | 2026-11-20 | 0 | True | WTP-CIV-010 | FS |
| WTP-CIV-030 | 3.3 | WTP Foundations / Base Slabs | 60 | Chinaimo WTP | 2026-11-21 | 2027-01-29 | 0 | True | WTP-CIV-020 | FS |
| WTP-CIV-040 | 3.4 | Mixing / Flocculation Basin RC Works | 70 | Chinaimo WTP | 2027-01-30 | 2027-04-21 | 0 | True | WTP-CIV-030 | FS |
| WTP-CIV-050 | 3.5 | Sedimentation Basin RC Works | 100 | Chinaimo WTP | 2027-02-23 | 2027-06-18 | 0 | True | WTP-CIV-040 | SS+20d |
| WTP-CIV-060 | 3.6 | Rapid Sand Filter Structure | 80 | Chinaimo WTP | 2027-06-19 | 2027-09-20 | 0 | True | WTP-CIV-050 | FS |
| WTP-CIV-070 | 3.7 | Internal Channels / Pipe Galleries | 45 | Chinaimo WTP | 2027-09-21 | 2027-11-11 | 0 | True | WTP-CIV-060 | FS |
| WTP-CIV-080 | 3.8 | Waterproofing / Protective Coating | 30 | Chinaimo WTP | 2027-11-12 | 2027-12-16 | 0 | True | WTP-CIV-070 | FS |
| WTP-CIV-090 | 3.9 | Hydrostatic / Structural Water Test | 14 | Chinaimo WTP | 2027-12-17 | 2028-01-01 | 0 | True | WTP-CIV-080 | FS |
| RES-010 | 4.1 | 10,000 mÂ³ Reservoir Excavation | 40 | Chinaimo Reservoir | 2026-09-24 | 2026-11-09 | 330 |  | PREL-030 | FS |
| RES-020 | 4.2 | Reservoir Foundation / Base Slab | 60 | Chinaimo Reservoir | 2026-11-10 | 2027-01-18 | 330 |  | RES-010 | FS |
| RES-030 | 4.3 | Reservoir Walls / Columns | 100 | Chinaimo Reservoir | 2027-01-19 | 2027-05-14 | 330 |  | RES-020 | FS |
| RES-040 | 4.4 | Reservoir Roof Slab | 60 | Chinaimo Reservoir | 2027-05-15 | 2027-07-23 | 330 |  | RES-030 | FS |
| RES-050 | 4.5 | Reservoir Waterproofing / Coating | 30 | Chinaimo Reservoir | 2027-07-24 | 2027-08-27 | 330 |  | RES-040 | FS |
| RES-060 | 4.6 | Reservoir Hydrostatic Test | 14 | Chinaimo Reservoir | 2027-08-28 | 2027-09-13 | 330 |  | RES-050 | FS |
| BLDG-010 | 5.1 | Pump Room Civil / Structural Works | 75 | Buildings | 2026-12-15 | 2027-03-11 | 254 |  | WTP-CIV-030 | SS+20d |
| BLDG-020 | 5.2 | Chemical Building Civil / Architectural | 90 | Buildings | 2026-12-26 | 2027-04-09 | 349 |  | WTP-CIV-030 | SS+30d |
| BLDG-030 | 5.3 | Administration & Laboratory Building | 120 | Buildings | 2026-11-04 | 2027-03-23 | 499 |  | WTP-CIV-010 | FS |
| BLDG-040 | 5.4 | Building MEP / Architectural Finishes | 70 | Buildings | 2027-03-24 | 2027-06-12 | 499 |  | BLDG-030 | FS |
| ME-010 | 6.1 | Process Piping Installation | 100 | Process M&E | 2028-01-03 | 2028-04-27 | 0 | True | WTP-CIV-090;PROC-010 | FS;FS |
| ME-020 | 6.2 | Pumps & Mechanical Equipment Installation | 90 | Process M&E | 2027-10-20 | 2028-02-01 | 164 |  | BLDG-010;PROC-010 | FS;FS |
| ME-030 | 6.3 | Chemical Dosing Equipment Installation | 70 | Process M&E | 2027-10-20 | 2028-01-08 | 184 |  | BLDG-020;PROC-010 | FS;FS |
| ME-040 | 6.4 | Filter Media / Underdrain Equipment | 50 | Process M&E | 2028-01-03 | 2028-02-29 | 140 |  | WTP-CIV-090;PROC-010 | FS;FS |
| ME-050 | 6.5 | Electrical Installation / MCC / Cabling | 100 | Process M&E | 2027-08-11 | 2027-12-04 | 124 |  | BLDG-010;PROC-030 | FS;FS |
| ME-060 | 6.6 | Instrumentation & SCADA Installation | 90 | Process M&E | 2028-04-28 | 2028-08-10 | 0 | True | ME-010;ME-050;PROC-020 | FS;FS;FS |
| SAL-010 | 7.1 | Salakham Site Preparation / Excavation | 40 | Salakham | 2026-09-24 | 2026-11-09 | 334 |  | PREL-030 | FS |
| SAL-020 | 7.2 | 7,100 mÂ³ Reservoir RC Works | 180 | Salakham | 2026-11-10 | 2027-06-07 | 334 |  | SAL-010 | FS |
| SAL-030 | 7.3 | Salakham Pump Room | 90 | Salakham | 2026-10-29 | 2027-02-10 | 434 |  | SAL-010 | SS+30d |
| SAL-040 | 7.4 | Salakham M&E Installation | 80 | Salakham | 2027-10-20 | 2028-01-20 | 219 |  | SAL-020;SAL-030;PROC-010 | FS;FS;FS |
| PWR-010 | 8.1 | 22-kV Route Survey / Permits | 45 | Power | 2026-09-24 | 2026-11-14 | 294 |  | PREL-020 | FS |
| PWR-020 | 8.2 | Pole / Foundation Works | 100 | Power | 2026-11-16 | 2027-03-11 | 294 |  | PWR-010 | FS |
| PWR-030 | 8.3 | 22-kV Line Installation | 120 | Power | 2027-03-12 | 2027-07-29 | 294 |  | PWR-020 | FS |
| PWR-040 | 8.4 | Receiving Equipment / Energization | 30 | Power | 2027-08-11 | 2027-09-14 | 284 |  | PWR-030;PROC-030 | FS;FS |
| COMM-010 | 9.1 | Mechanical Pre-Commissioning | 25 | Commissioning | 2028-04-28 | 2028-05-26 | 90 |  | ME-010;ME-020;ME-030;ME-040 | FS;FS;FS;FS |
| COMM-020 | 9.2 | Electrical / I&C Pre-Commissioning | 25 | Commissioning | 2028-08-11 | 2028-09-08 | 0 | True | ME-060;PWR-040 | FS;FS |
| COMM-030 | 9.3 | Dry Commissioning | 20 | Commissioning | 2028-09-09 | 2028-10-02 | 0 | True | COMM-010;COMM-020 | FS;FS |
| COMM-040 | 9.4 | Wet Commissioning / Process Start-Up | 30 | Commissioning | 2028-10-03 | 2028-11-06 | 0 | True | COMM-030;RES-060;SAL-040 | FS;FS;FS |
| COMM-050 | 9.5 | Performance / Water Quality Testing | 30 | Commissioning | 2028-11-07 | 2028-12-11 | 0 | True | COMM-040 | FS |
| COMM-060 | 9.6 | Punch List / Rectification | 30 | Commissioning | 2028-12-12 | 2029-01-15 | 0 | True | COMM-050 | FS |
| COMM-070 | 9.7 | Training / O&M Documents | 20 | Commissioning | 2028-10-03 | 2028-10-25 | 70 |  | COMM-040 | SS |
| COMM-080 | 9.8 | Taking Over / Completion Milestone | 0 | Commissioning | 2029-01-15 | 2029-01-15 | 0 | True | COMM-060;COMM-070;BLDG-040 | FS;FS;FS |
